# Внедрение системы автоматизации

How a schedule from MS Project changed from version to version. A marks actual dates.

## Version 1 (data date 2021-12-06, saved 2021-12-07, file Внедрение системы автоматизации.mpp)

Note of the change: init

| ID | WBS | Task | Duration | Start | Finish | Predecessors | Total float | Constraint |
| --- | --- | --- | --- | --- | --- | --- | --- | --- |
| 1 | 1 | **Внедрение системы автоматизации отдела** | 40d | 2021-12-06 | 2022-02-07 |  | 0d |  |
| 2 | 1.1 | **Предварительное обследование** | 12d | 2021-12-06 | 2021-12-21 |  | 0d |  |
| 3 |  | Описание функций работников отдела | 3d | 2021-12-06 | 2021-12-08 |  | 0d | start no earlier than 2021-12-06 |
| 4 |  | Разработка моделей процессов отдела | 5d | 2021-12-09 | 2021-12-15 | 3 | 0d |  |
| 5 |  | Описание задач, подлежащих автоматизации | 4d | 2021-12-16 | 2021-12-21 | 4 | 0d |  |
| 6 | 1.2 | **Выбор системы автоматизации отдела** | 13d | 2021-12-09 | 2021-12-27 |  | 0d |  |
| 7 |  | Разработка критериев выбора системы | 2d | 2021-12-09 | 2021-12-10 | 4SS | 6.5d |  |
| 8 |  | Расчет бюджета автоматизации отдела | 2d | 2021-12-09 | 2021-12-10 | 7SS | 6.5d |  |
| 9 |  | Согласование бюджета с руководителем предприятия | 0.5d | 2021-12-13 | 2021-12-13 | 8 | 6.5d |  |
| 10 |  | Анализ существующих систем автоматизации | 2d | 2021-12-22 | 2021-12-23 | 7, 5, 9 | 0d |  |
| 11 |  | Выбор системы по заданным критериям | 1d | 2021-12-24 | 2021-12-24 | 10 | 0d |  |
| 12 |  | Закупка системы автоматизации | 1d | 2021-12-27 | 2021-12-27 | 11 | 0d |  |
| 13 | 1.3 | **Внедрение системы автоматизации** | 24d | 2021-12-28 | 2022-02-07 |  | 0d |  |
| 14 |  | Закупка необходимых технических средств | 3d | 2021-12-28 | 2021-12-30 | 9, 12 | 0d |  |
| 15 |  | Установка ТС на рабочих местах | 5d | 2022-01-10 | 2022-01-14 | 14 | 3d |  |
| 16 |  | Разработка БД | 8d | 2022-01-10 | 2022-01-19 | 14 | 0d |  |
| 17 |  | Прокладка сетей и кабелей | 4d | 2022-01-10 | 2022-01-13 | 14 | 4d |  |
| 18 |  | Установка ПО на АРМ сотрудников | 4d | 2022-01-20 | 2022-01-25 | 17, 16, 15 | 0d |  |
| 19 |  | Отладка и тестирование ПО | 5d | 2022-01-26 | 2022-02-01 | 18 | 4d |  |
| 20 |  | Обучение сотрудников работе с ПО | 9d | 2022-01-26 | 2022-02-07 | 18 | 0d |  |
| 21 |  | Окончание проекта | 0d | 2022-02-07 | 2022-02-07 | 20, 19 | 0d |  |

## Version 2 (data date 2021-12-06, saved 2021-12-12, file lab2.mpp)

Note of the change: init

Last finish 2022-02-07 → 2022-02-09 (+2d). Complete tasks 0 → 4.

Changed:

| ID | Task | Start | Finish | Duration | Complete | Total float | Other |
| --- | --- | --- | --- | --- | --- | --- | --- |
| 1 | **Внедрение системы автоматизации отдела** | 2021-12-06 A | 2022-02-07 → 2022-02-09 (+2d) | 40d → 42d? | 0% → 26% |  | baseline start none → 2021-12-06; baseline finish none → 2022-02-07 |
| 2 | **Предварительное обследование** | 2021-12-06 A | 2021-12-21 → 2021-12-23 (+2d) | 12d → 14d | 0% → 86% |  | baseline start none → 2021-12-06; baseline finish none → 2021-12-21 |
| 3 | Описание функций работников отдела | 2021-12-06 A | 2021-12-08 A |  | 0% → 100% | 0d → none | baseline start none → 2021-12-06; baseline finish none → 2021-12-08 |
| 4 | Разработка моделей процессов отдела | 2021-12-09 A | 2021-12-15 → 2021-12-17 A (+2d) | 5d → 7d | 0% → 100% | 0d → none | baseline start none → 2021-12-09; baseline finish none → 2021-12-15 |
| 5 | Описание задач, подлежащих автоматизации | 2021-12-16 → 2021-12-20 A (+4d) | 2021-12-21 → 2021-12-23 (+2d) |  | 0% → 50% |  | baseline start none → 2021-12-16; baseline finish none → 2021-12-21 |
| 6 | **Выбор системы автоматизации отдела** | 2021-12-09 A | 2021-12-27 → 2021-12-29 (+2d) | 13d → 15d | 0% → 47% |  | baseline start none → 2021-12-09; baseline finish none → 2021-12-27 |
| 7 | Разработка критериев выбора системы | 2021-12-09 A | 2021-12-10 A |  | 0% → 100% | 6.5d → none | baseline start none → 2021-12-09; baseline finish none → 2021-12-10 |
| 8 | Расчет бюджета автоматизации отдела | 2021-12-09 A | 2021-12-10 A |  | 0% → 100% | 6.5d → none | baseline start none → 2021-12-09; baseline finish none → 2021-12-10 |
| 9 | Согласование бюджета с руководителем предприятия |  |  |  |  | 6.5d → 8.5d | baseline start none → 2021-12-13; baseline finish none → 2021-12-13 |
| 10 | Анализ существующих систем автоматизации | 2021-12-22 → 2021-12-24 (+2d) | 2021-12-23 → 2021-12-27 (+4d) |  |  |  | baseline start none → 2021-12-22; baseline finish none → 2021-12-23 |
| 11 | Выбор системы по заданным критериям | 2021-12-24 → 2021-12-28 (+4d) | 2021-12-24 → 2021-12-28 (+4d) |  |  |  | baseline start none → 2021-12-24; baseline finish none → 2021-12-24 |
| 12 | Закупка системы автоматизации | 2021-12-27 → 2021-12-29 (+2d) | 2021-12-27 → 2021-12-29 (+2d) |  |  |  | baseline start none → 2021-12-27; baseline finish none → 2021-12-27 |
| 13 | **Внедрение системы автоматизации** | 2021-12-28 → 2021-12-06 (-22d) | 2022-02-07 → 2022-02-09 (+2d) | 24d → 42d? |  |  | baseline start none → 2021-12-06; baseline finish none → 2022-02-07 |
| 14 | Закупка необходимых технических средств | 2021-12-28 → 2021-12-30 (+2d) | 2021-12-30 → 2022-01-11 (+12d) |  |  |  | baseline start none → 2021-12-28; baseline finish none → 2021-12-30 |
| 15 | Установка ТС на рабочих местах | 2022-01-10 → 2022-01-12 (+2d) | 2022-01-14 → 2022-01-18 (+4d) |  |  |  | baseline start none → 2022-01-10; baseline finish none → 2022-01-14 |
| 16 | Интеграция с внутренними системами | 2022-01-10 → 2022-01-12 (+2d) | 2022-01-19 → 2022-01-21 (+2d) |  |  |  | was named Разработка БД; baseline start none → 2022-01-10; baseline finish none → 2022-01-19 |
| 17 | Прокладка сетей и кабелей | 2022-01-10 → 2022-01-12 (+2d) | 2022-01-13 → 2022-01-17 (+4d) |  |  |  | baseline start none → 2022-01-10; baseline finish none → 2022-01-13 |
| 18 | Установка ПО на рабочих местах | 2022-01-20 → 2022-01-24 (+4d) | 2022-01-25 → 2022-01-27 (+2d) |  |  |  | was named Установка ПО на АРМ сотрудников; baseline start none → 2022-01-20; baseline finish none → 2022-01-25 |
| 19 | Отладка и тестирование ПО | 2022-01-26 → 2022-01-28 (+2d) | 2022-02-01 → 2022-02-03 (+2d) |  |  |  | baseline start none → 2022-01-26; baseline finish none → 2022-02-01 |
| 20 | Обучение сотрудников работе с ПО | 2022-01-26 → 2022-01-28 (+2d) | 2022-02-07 → 2022-02-09 (+2d) |  |  |  | baseline start none → 2022-01-26; baseline finish none → 2022-02-07 |
| 23 | Окончание проекта | 2022-02-07 → 2022-02-09 (+2d) | 2022-02-07 → 2022-02-09 (+2d) |  |  |  | baseline start none → 2022-02-07; baseline finish none → 2022-02-07 |
